# GestionProyecto

Schedule from MS Project, 2013-03-22 to 2014-02-27.
Hewlett-Packard

## Calendars

- Estándar: Mon-Fri 09:00-13:00, 15:00-19:00; Sat-Sun off.

## Resources

| Resource | Rate |
| --- | --- |
| DIRECTOR PROYECTO | 60 |
| INGENIERO AGRONOMO | 48 |
| EXPERTO GIS | 47 |
| ECONOMISTA | 45 |
| SOCIOLOGO | 45 |
| INGENIERO EN MEDIOAMBIENTE | 45 |
| ADMINISTRATIVO | 30 |
| TECNICOS DE APOYO | 35 |

## Schedule

| ID | WBS | Task | Type | Duration | Start | Finish | Predecessors |
| --- | --- | --- | --- | --- | --- | --- | --- |
| 1 | 1 | **1 TOTAL PROYECTO** |  | 242d | 2013-03-22 | 2014-02-24 |  |
| 2 | 1.1 | **1.1 PREPARACION PARA LA FORMULACION** |  | 31d | 2013-03-22 | 2013-05-03 |  |
| 3 | 1.1.1 | 1.1.1 INICIO | milestone, manual | 0d | 2013-03-22 | 2013-03-22 |  |
| 4 | 1.1.2 | 1.1.2 TERMINOS DE REFERENCIA | manual | 10d | 2013-03-22 | 2013-04-04 | 3 |
| 5 | 1.1.3 | 1.1.3 FINANCIACION | manual | 7d | 2013-03-22 | 2013-04-01 | 3 |
| 6 | 1.1.4 | 1.1.4 COMITÉ DE COORDINACION | manual | 5d | 2013-03-22 | 2013-03-28 | 3 |
| 7 | 1.1.5 | 1.1.5 EQUIPO DE FORMULACION | manual | 15d | 2013-03-29 | 2013-04-18 | 4SS, 6 |
| 8 | 1.1.6 | 1.1.6 METODOLOGIA Y PLAN DE TRABAJO | manual | 10d | 2013-04-12 | 2013-04-25 | 7FS-5d, 5, 4, 6SS |
| 9 | 1.1.7 | 1.1.7 DOC Nº1 | manual | 5d | 2013-04-26 | 2013-05-02 | 8 |
| 10 | 1.1.8 | 1.1.8 ENTREGA DOC Nº1 | milestone, manual | 0d | 2013-05-03 | 2013-05-03 | 9 |
| 11 | 1.1.9 | 1.1.9 SEMINARIO LANZ. POYECTO | manual | 1d | 2013-05-03 | 2013-05-03 | 10 |
| 12 | 1.2 | **1.2 ANALASIS Y DIAGNOSTICO** |  | 94d | 2013-05-06 | 2013-09-12 |  |
| 13 | 1.2.1 | **1.2.1 ANALISIS ANTECEDENTES** |  | 15d | 2013-05-06 | 2013-05-24 | 11 |
| 14 | 1.2.1.1 | 1.2.1.1 POLITICAS Y PROGRAMAS | manual | 10d | 2013-05-06 | 2013-05-17 | 11 |
| 15 | 1.2.1.2 | 1.2.1.2 MARCO LEGAL | manual | 15d | 2013-05-06 | 2013-05-24 | 11 |
| 16 | 1.2.1.3 | 1.2.1.3 BD EXISTENTE | manual | 7d | 2013-05-06 | 2013-05-14 | 11 |
| 17 | 1.2.2 | **1.2.2 ANALISIS AREA PROYECTO** |  | 80d | 2013-05-15 | 2013-09-03 | 11, 16 |
| 18 | 1.2.2.1 | 1.2.2.1 INVENTARIO AMBIENAL | manual | 35d | 2013-03-22 | 2013-05-09 |  |
| 19 | 1.2.2.2 | 1.2.2.2 INFRAESTTRUCTURAS Y SERVIC | manual | 20d | 2013-05-10 | 2013-06-06 | 18 |
| 20 | 1.2.2.3 | 1.2.2.3 ANALISIS DE SECTORES | manual | 25d | 2013-06-07 | 2013-07-11 | 14, 13, 15, 19 |
| 21 | 1.2.2.4 | 1.2.2.4 ANALISIS POBLACIONAL | manual | 20d | 2013-05-15 | 2013-06-11 |  |
| 22 | 1.2.2.5 | 1.2.2.5 SISTEMA TERRITORIAL INFO | manual | 21d | 2013-05-15 | 2013-06-12 | 16 |
| 23 | 1.2.3 | **1.2.3 ANALISIS AGENE Y PARTICIPACION** |  | 82d | 2013-05-22 | 2013-09-12 |  |
| 24 | 1.2.3.1 | 1.2.3.1 IDENT. AGENTES Y TIPOLOGIA | manual | 10d | 2013-05-22 | 2013-06-04 | 22SS+5d |
| 25 | 1.2.3.2 | 1.2.3.2 ENCUESTA CON LOS AGENTES | manual | 60d | 2013-06-05 | 2013-08-27 | 24 |
| 26 | 1.2.3.3 | 1.2.3.3 TALLER DE PARTICIPACION AP | manual | 1d | 2013-06-19 | 2013-06-19 | 25SS+10d |
| 27 | 1.2.3.4 | 1.2.3.4 ANALISIS PROSPECIVO "SIN" | manual | 6d | 2013-06-20 | 2013-06-27 | 26 |
| 28 | 1.2.3.5 | 1.2.3.5 INFORME DE PARTICIPACION | manual | 10d | 2013-08-28 | 2013-09-10 | 27, 25 |
| 29 | 1.2.3.6 | 1.2.3.6 PRESENTACION Y VAL. CONCLUSIONES | manual | 2d | 2013-09-11 | 2013-09-12 | 28 |
| 30 | 1.2.4 | 1.2.4 CONCLUSIONES Y DOC Nº2 | manual | 1d | 2013-09-13 | 2013-09-13 | 29 |
| 31 | 1.2.5 | 1.2.5 DOC Nº2 REVISION PROMOTOR | manual | 1d | 2013-09-16 | 2013-09-16 | 29, 30 |

| ID | WBS | Task | Type | Duration | Start | Finish | Predecessors |
| --- | --- | --- | --- | --- | --- | --- | --- |
| 32 | 1.3 | **1.3 DISEÑO DEL PROYECTO** |  | 92d | 2013-09-17 | 2014-01-22 |  |
| 33 | 1.3.1 | 1.3.1 OBJETTIVOS Y METAS | manual | 1d | 2013-09-17 | 2013-09-17 | 31 |
| 34 | 1.3.2 | 1.3.2 ALTERNATIVAS ESTRATEGICAS | manual | 7d | 2013-09-18 | 2013-09-26 | 33 |
| 35 | 1.3.3 | 1.3.3 FORMULACION DE LOS COMPONENTTES | manual | 60d | 2013-09-27 | 2013-12-19 | 34 |
| 36 | 1.3.4 | 1.3.4 DISEÑO DE LA ORGANIZACIÓN | manual | 10d | 2013-12-20 | 2014-01-02 | 35 |
| 37 | 1.3.5 | 1.3.5 SISTEMA DE SEGUIMIENTO Y EVALUACION | manual | 7d | 2014-01-03 | 2014-01-13 | 36, 35 |
| 38 | 1.3.6 | 1.3.6 PRESUPUESTACION | manual | 4d | 2014-01-03 | 2014-01-08 | 35, 36 |
| 39 | 1.3.7 | 1.3.7 DOC Nº3 ENTREGRA PROMOTOR | milestone, manual | 0d | 2014-01-09 | 2014-01-09 | 38 |
| 40 | 1.3.8 | 1.3.8 DOC Nº3 REVISION PROMOTOR | manual | 10d | 2014-01-09 | 2014-01-22 | 39 |
| 41 | 1.4 | **1.4 EVALUACION MULTICRITERIO** |  | 15d | 2014-01-23 | 2014-02-12 |  |
| 42 | 1.4.1 | 1.4.1 EVALUACION ECONOMICO-FINANCIERA | manual | 10d | 2014-01-23 | 2014-02-05 | 40 |
| 43 | 1.4.2 | 1.4.2 EVALUACION SOCIOAL Y CULTTURAL | manual | 10d | 2014-01-23 | 2014-02-05 | 40 |
| 44 | 1.4.3 | 1.4.3 EVALUACION AMBIENTAL | manual | 10d | 2014-01-23 | 2014-02-05 | 40 |
| 45 | 1.4.4 | 1.4.4 EVALUACION DE RIESGO, SEGURIDAD Y SALUD DEL PROYECTO | manual | 10d | 2014-01-23 | 2014-02-05 | 40 |
| 46 | 1.4.5 | 1.4.5 ENTREGA DOC Nº 4 | milestone, manual | 0d | 2014-02-06 | 2014-02-06 | 45 |
| 47 | 1.4.6 | 1.4.6 REVISION DOC Nº4 | manual | 5d | 2014-02-06 | 2014-02-12 | 42, 43, 44 |
| 48 | 1.5 | **1.5 DOCUMENTACION** |  | 10d | 2014-02-13 | 2014-02-26 |  |
| 49 | 1.5.1 | 1.5.1 MEMORIA | manual | 6d | 2014-02-13 | 2014-02-20 | 47 |
| 50 | 1.5.2 | 1.5.2 ANEXOS A LA MEMORIA | manual | 10d | 2014-02-13 | 2014-02-26 | 47 |
| 51 | 1.5.3 | 1.5.3 PLANOS | manual | 10d | 2014-02-13 | 2014-02-26 | 47 |
| 52 | 1.5.4 | 1.5.4 PLIEGO DE CONDICIONES | manual | 3d | 2014-02-13 | 2014-02-17 | 47 |
| 53 | 1.5.5 | 1.5.5 PRESUPUESTO | manual | 3d | 2014-02-13 | 2014-02-17 | 47 |
| 54 | 1.5.6 | 1.5.6 ESTUDIO DE SEGURIDAD Y SALUD | manual | 10d | 2014-02-13 | 2014-02-26 | 47 |
| 55 | 1.5.7 | 1.5.7 ENTREGA DEL PROYECTO | milestone, manual | 0d | 2014-02-27 | 2014-02-27 | 54, 49, 50, 51, 52, 53 |
